# Gantt_ProjetDiscret

Schedule from MS Project, 2015-10-19 to 2016-03-17, status date 2015-11-17, 7 hours a day, costs in €, A marks actual dates.
UFR-SFA

## Calendars

- Standard: Mon-Fri 09:00-12:00, 14:00-18:00; Sat-Sun off. Exceptions (off unless hours are given): 2015-11-02 to 2015-11-13 (Cours 02/11 - 13/11), 2015-11-23 to 2015-12-11 (Cours 23/11 - 11/12), 2015-12-25 to 2016-01-01 (Vacances), 2016-01-04 to 2016-01-15 (Cours 04/01 - 15/01), 2016-02-01 to 2016-02-12 (Cours 01/02 - 12/02), 2016-02-29 to 2016-03-04 (Cours 29/02 - 04/03).

## Resources

| Resource | Rate |
| --- | --- |
| Zied | 21.43 |
| Thomas | 21.43 |
| Adrien | 21.43 |
| Lydie | 21.43 |

## Schedule

| ID | WBS | Task | Type | Duration | Start | Finish | Predecessors | Complete | Remaining | Total slack | Free slack | Constraint | Resources | Work | Actual work | Cost | Actual cost |
| --- | --- | --- | --- | --- | --- | --- | --- | --- | --- | --- | --- | --- | --- | --- | --- | --- | --- |
| 1 | 1 | Jalon début | milestone | 0d | 2015-10-19 A | 2015-10-19 A |  | 100% |  |  |  |  |  |  |  |  |  |
| 2 | 2 | Rédaction cahier des charges |  | 10d | 2015-10-19 A | 2015-10-30 A | 1 | 100% |  |  |  |  | Adrien; Lydie; Thomas; Zied | 280h | 280h | 6,000 | 6,000 |
| 3 | 3 | Jalon début développement | milestone | 0d | 2015-10-30 A | 2015-10-30 A | 2 | 100% |  |  |  |  |  |  |  |  |  |
| 4 | 4 | 1. Documentation, aide utilisateur, tests |  | 34d | 2015-11-16 A | 2016-03-02 | 3 | 3% | 33d | 9d |  | finish no earlier than 2016-03-02 |  |  |  |  |  |
| 5 | 5 | **2. Conception** |  | 8d | 2015-11-16 A | 2015-12-16 | 3 | 50% | 4d | 1d | 0d |  |  | 224h | 112h | 4,800 | 2,400.01 |
| 6 | 5.1 | 3. Etude du code |  | 2d | 2015-11-16 A | 2015-11-17 A | 3 | 100% |  |  |  |  | Adrien; Lydie; Thomas; Zied | 56h | 56h | 1,200 | 1,200 |
| 7 | 5.2 | 4. Conception de l'architecture |  | 4d | 2015-11-18 A | 2015-12-14 | 6 | 50% | 2d | 1d | 0d |  | Adrien; Lydie; Thomas; Zied | 112h | 56h | 2,400 | 1,200.01 |
| 8 | 5.3 | 5. Refatoring |  | 2d | 2015-12-15 | 2015-12-16 | 7 |  |  | 1d | 0d |  | Adrien; Lydie; Thomas; Zied | 56h |  | 1,200 |  |
| 9 | 6 | Jalon Fin conception | milestone | 0d | 2015-12-16 | 2015-12-16 | 8, 5 |  |  | 1d | 0d |  |  |  |  |  |  |
| 10 | 7 | **6. Réalisation noyau minimal fonctionnel** |  | 6d | 2015-12-17 | 2015-12-24 | 9 |  |  | 1d | 0d |  |  | 112h |  | 2,400 |  |
| 11 | 7.1 | 7. Transcription de l'algorithme |  | 1d | 2015-12-17 | 2015-12-17 | 9 |  |  | 1d | 0d |  | Adrien; Lydie | 14h |  | 300 |  |
| 12 | 7.2 | 8.Rendu 3D |  | 5d | 2015-12-18 | 2015-12-24 | 11 |  |  | 1d | 0d |  | Adrien | 35h |  | 750 |  |
| 13 | 7.3 | 9. Implémentation des classes |  | 5d | 2015-12-17 | 2015-12-23 | 9 |  |  | 2d | 1d | finish no earlier than 2015-12-21 | Lydie; Thomas | 63h |  | 1,350 |  |
| 14 | 8 | **10. Interface minimale** |  | 4.8d | 2015-12-17 | 2015-12-23 | 9 |  |  | 2.2d | 1.2d |  |  | 33.6h |  | 720 |  |
| 15 | 8.1 | 11. Développement espace 3D |  | 1.8d | 2015-12-17 | 2015-12-18 | 9 |  |  | 2.2d | 0d |  | Zied | 12.6h |  | 270 |  |
| 16 | 8.2 | 12. Développement espace 2D |  | 2d | 2015-12-18 | 2015-12-22 | 15 |  |  | 2.2d | 0d |  | Zied | 14h |  | 300 |  |
| 17 | 8.3 | 13. Menus (non liés) |  | 1d | 2015-12-22 | 2015-12-23 | 16 |  |  | 2.2d | 1.2d |  | Zied | 7h |  | 150 |  |
| 18 | 9 | Jalon Noyau fonctionnel minimal | milestone | 0d | 2015-12-24 | 2015-12-24 | 17, 12, 13, 10, 14 |  |  | 1d | 0d |  |  |  |  |  |  |
| 19 | 10 | **14. Amélioration IHM** |  | 3d | 2016-01-18 | 2016-01-20 | 18 |  |  | 1d | 0d |  |  | 21h |  | 450 |  |
| 20 | 10.1 | 15. Choix des courbes |  | 1d | 2016-01-18 | 2016-01-18 | 18 |  |  | 1d | 0d |  | Zied | 7h |  | 150 |  |
| 21 | 10.2 | 16. Prise en compte des demandes |  | 2d | 2016-01-19 | 2016-01-20 | 20 |  |  | 1d | 0d |  | Zied | 14h |  | 300 |  |
| 22 | 11 | **17. Ajout fonctionnalités** |  | 3d | 2016-01-18 | 2016-01-20 | 18 |  |  | 1d | 0d |  |  | 56h |  | 1,200 |  |
| 23 | 11.1 | 18. Ajout de méridiennes |  | 1.5d | 2016-01-18 | 2016-01-19 | 18 |  |  | 1d | 0d |  | Lydie; Adrien | 21h |  | 450 |  |
| 24 | 11.2 | 19. Ajout de courbes de révolution |  | 1.5d | 2016-01-19 | 2016-01-20 | 23 |  |  | 1d | 0d |  | Adrien; Lydie | 21h |  | 450 |  |
| 25 | 11.3 | 20. Plans et Coupes |  | 1d | 2016-01-18 | 2016-01-18 | 18 |  |  | 2d | 0d |  | Thomas | 7h |  | 150 |  |
| 26 | 11.4 | 21. Caméra |  | 1d | 2016-01-19 | 2016-01-19 | 25 |  |  | 2d | 1d |  | Thomas | 7h |  | 150 |  |
| 27 | 12 | Jalon Application minimale | milestone | 0d | 2016-01-20 | 2016-01-20 | 19, 22, 26, 21, 24 |  |  | 1d | 0d |  |  |  |  |  |  |

Notes:
- 4: Tâche générique, réalisée par tout les membres du groupes

| ID | WBS | Task | Type | Duration | Start | Finish | Predecessors | Total slack | Free slack | Constraint | Resources | Work | Cost |
| --- | --- | --- | --- | --- | --- | --- | --- | --- | --- | --- | --- | --- | --- |
| 28 | 13 | **22. Amélioration IHM** |  | 6d | 2016-01-21 | 2016-01-28 | 27 | 1d | 0d |  |  | 42h | 900 |
| 29 | 13.1 | 23. Prise en compte des demandes |  | 2d | 2016-01-21 | 2016-01-22 | 27 | 1d | 0d |  | Zied | 14h | 300 |
| 30 | 13.2 | 24. Paramètres simples |  | 4d | 2016-01-25 | 2016-01-28 | 29 | 1d | 0d |  | Zied | 28h | 600 |
| 31 | 14 | **25. Dessin à main levée méridienne** |  | 4d | 2016-01-21 | 2016-01-26 | 27 | 3d | 2d |  |  | 56h | 1,200 |
| 32 | 14.1 | 26. Implémentation algorithme main levée |  | 1d | 2016-01-21 | 2016-01-21 | 27 | 3d | 0d |  | Lydie; Adrien | 14h | 300 |
| 33 | 14.2 | 27. Implantation dessin 2D |  | 2d | 2016-01-22 | 2016-01-25 | 32 | 3d | 0d |  | Lydie; Adrien | 28h | 600 |
| 34 | 14.3 | 28. Lien Dessin/Algorithme |  | 1d | 2016-01-26 | 2016-01-26 | 33 | 3d | 2d |  | Adrien; Lydie | 14h | 300 |
| 35 | 15 | Jalon Dessin main levée | milestone | 0d | 2016-01-28 | 2016-01-28 | 28, 31, 30, 34 | 1d | 0d |  |  |  |  |
| 36 | 16 | **29. Gestions de données** |  | 4d | 2016-01-29 | 2016-02-17 | 35 | 3d | 2d |  |  | 28h | 600 |
| 37 | 16.1 | 30. Export de l'espace 3D |  | 3d | 2016-01-29 | 2016-02-16 | 35 | 3d | 0d |  | Adrien | 21h | 450 |
| 38 | 16.2 | 31. Sauvegarde/Chargement des courbes |  | 1d | 2016-02-17 | 2016-02-17 | 37 | 3d | 2d |  | Thomas | 7h | 150 |
| 39 | 17 | **32. Amélioration de l'IHM** |  | 6d | 2016-01-29 | 2016-02-19 | 35 | 1d | 0d |  |  | 77h | 1,650 |
| 40 | 17.1 | 33. Prise en compte des demandes |  | 1d | 2016-01-29 | 2016-01-29 | 35 | 1d | 0d |  | Zied; Lydie | 14h | 300 |
| 41 | 17.2 | 34. Paramètres avancés |  | 4d | 2016-02-15 | 2016-02-18 | 40 | 2d | 1d |  | Zied | 28h | 600 |
| 42 | 17.3 | 35. Rentrer des formules |  | 5d | 2016-02-15 | 2016-02-19 | 40 | 1d | 0d |  | Lydie | 35h | 750 |
| 43 | 18 | Jalon Ajout de formules | milestone | 0d | 2016-02-19 | 2016-02-19 | 42, 36, 39, 38, 41 | 1d |  |  |  |  |  |
| 44 | 19 | 36. Ajout des courbes par l'utilisateur |  | 4d | 2016-02-23 | 2016-03-02 | 43 | 0d |  | finish no earlier than 2016-03-02 | Zied; Thomas; Adrien; Lydie | 112h | 2,400 |
| 45 | 20 | Jalon fin développement | milestone | 0d | 2016-03-02 | 2016-03-02 | 44 | 0d |  |  |  |  |  |
| 46 | 21 | 37. Rédaction rapport technique et finalisation documentation |  | 9d | 2016-03-07 | 2016-03-17 | 45 | 0d |  |  | Zied; Thomas; Adrien; Lydie | 252h | 5,400 |
| 47 | 22 | Jalon fin projet | milestone | 0d | 2016-03-17 | 2016-03-17 | 46, 4 | 0d |  |  |  |  |  |
